# DC module

Schedule from a web Gantt chart, 2026-08-19 to 2026-11-13.
Every day is a working day

## Schedule

| ID | WBS | Task | Type | Duration | Start | Finish | Complete | Status |
| --- | --- | --- | --- | --- | --- | --- | --- | --- |
| 2 | 1 | **0. SDV rework** | fixed start, fixed end | 20d | 2026-08-19 | 2026-09-07 | 84% |  |
| 3 | 1.1 | Plan A: 增加锡重新回流 |  | 1d | 2026-08-19 | 2026-08-19 | 100% | failed |
| 4 | 1.2 | Plan B：小锡炉返修 |  | 1d | 2026-08-19 | 2026-08-19 | 100% | failed |
| 5 | 1.3 | **Plan C: 波峰焊返修** |  | 14d | 2026-08-25 | 2026-09-07 | 81% |  |
| 6 | 1.3.1 | C.1 波峰焊治具到达 |  | 1d | 2026-08-25 | 2026-08-25 | 100% | done |
| 7 | 1.3.2 | C.2 验证 |  | 3d | 2026-08-25 | 2026-08-27 | 100% | done |
| 8 | 1.3.3 | C.3 返修 |  | 5d | 2026-08-25 | 2026-08-29 | 80% |  |
| 9 | 1.3.4 | C.4 出货 |  | 1d | 2026-09-07 | 2026-09-07 | 8% |  |
| 10 | 2 | **1. SDV-SIT DC module soldering study** | fixed start, fixed end | 81d | 2026-08-25 | 2026-11-13 | 9% |  |
| 11 | 2.1 | **Plan A: 波峰焊验证** | fixed start, fixed end | 51d | 2026-09-03 | 2026-10-23 |  |  |
| 12 | 2.1.1 | A.1 PCB/电解电容/DCmodule物资调拨 |  | 1d | 2026-09-15 | 2026-09-15 | 20% |  |
| 13 | 2.1.2 | A.1 锡条、无卤助焊剂调拨 |  | 50d | 2026-09-03 | 2026-10-22 |  |  |
| 14 | 2.1.3 | A.1 波峰焊治具 |  | 15d | 2026-09-15 | 2026-09-29 |  |  |
| 15 | 2.1.4 | A.2 PCB元器件避让 |  | 40d | 2026-09-06 | 2026-10-15 |  |  |
| 16 | 2.1.5 | A.2 建议减少PTH连接的铜面层数 |  | 40d | 2026-09-06 | 2026-10-15 |  |  |
| 17 | 2.1.6 | A 验证 |  | 2d | 2026-10-22 | 2026-10-23 |  | waiting |
| 18 | 2.2 | **Plan B: 回流焊验证** | fixed start, fixed end | 52d | 2026-08-25 | 2026-10-15 | 17% |  |
| 19 | 2.2.1 | B.1 PCB/电解电容/DCmodule物资调拨 |  | 20d | 2026-08-25 | 2026-09-13 | 20% |  |
| 20 | 2.2.2 | B.1 扩大钢网开孔 |  | 15d | 2026-08-25 | 2026-09-08 |  |  |
| 21 | 2.2.3 | B.1 治具增加合成石挡块（3mm&5mm) |  | 20d | 2026-08-25 | 2026-09-13 |  |  |
| 22 | 2.2.4 | B.1 线体调配 |  | 1d | 2026-09-10 | 2026-09-10 |  |  |
| 23 | 2.2.5 | B.1 验证 |  | 2d | 2026-09-11 | 2026-09-12 |  | waiting |
| 24 | 2.2.6 | B.2 建议减少PTH连接的铜面层数 |  | 40d | 2026-09-06 | 2026-10-15 |  |  |
| 25 | 2.2.7 | B.2 建议缩短Pin长度 |  | 40d | 2026-08-25 | 2026-10-03 | 50% | failed |
| 26 | 2.2.8 | B.2 线体调配 |  | 1d | 2026-10-04 | 2026-10-04 |  |  |
| 27 | 2.2.9 | B.2验证 |  | 1d | 2026-10-04 | 2026-10-04 |  | waiting |
| 28 | 2.3 | SIT Build |  | 1d | 2026-11-13 | 2026-11-13 | 100% | done |

Notes:
- 3: 无效果，锡在PTH孔外融化
- 4: 小锡炉放置区域无380V供电
- 7: 炉温验证Pass,部分焊点拉尖，已经增加手动维修；
- 8: 全部返修完成
- 9: 13/；其中4pcs 已经2D/ ICT/5D/Assembly/FCT test pass;
- 12: 0/2；
- 19: 0/2
- 25: 厂家已经备料，无法调整
